# DFS人力资源系统重构项目

Schedule from a web Gantt chart, 2024-07-01 to 2026-06-30.
Saturdays and Sundays are off

## Schedule

| ID | WBS | Task | Type | Duration | Start | Finish | Complete | inPeople |
| --- | --- | --- | --- | --- | --- | --- | --- | --- |
| 2 | 1 | **项目准备阶段** |  | 23d | 2024-07-01 | 2024-07-31 | 9% |  |
| 3 | 1.1 | **商务准备** |  | 23d | 2024-07-01 | 2024-07-31 |  |  |
| 4 | 1.1.1 | 技术协议书编写 |  | 5d | 2024-07-01 | 2024-07-05 |  | 陶智、顾恒琪 |
| 5 | 1.1.2 | 合同签署确认 | fixed end | 23d | 2024-07-01 | 2024-07-31 |  | 联友、盖雅 |
| 6 | 1.2 | **建立项目组工作环境** |  | 3d | 2024-07-01 | 2024-07-03 | 100% |  |
| 7 | 1.2.1 | 办公室和会议室 |  | 1d | 2024-07-01 | 2024-07-01 | 100% | 陶智 |
| 8 | 1.2.2 | 门禁、网络、通讯工具、饭卡、SVN |  | 3d | 2024-07-01 | 2024-07-03 | 100% | 陶智 |
| 9 | 1.2.3 | 其他办公设备和后勤保障（打印等） |  | 3d | 2024-07-01 | 2024-07-03 | 100% | 陶智 |
| 10 | 1.3 | **确定项目组机构** |  | 20d | 2024-07-01 | 2024-07-26 |  |  |
| 11 | 1.3.1 | 东风南方项目组织架构搭建 |  | 5d | 2024-07-01 | 2024-07-05 |  | 丁敏、顾恒琪 |
| 12 | 1.3.2 | 盖雅项目组织架构搭建 |  | 5d | 2024-07-01 | 2024-07-05 |  | 丁敏、顾恒琪 |
| 13 | 1.3.3 | 东风南方项目组成员和关键用户确认 |  | 15d | 2024-07-08 | 2024-07-26 |  | 丁敏、顾恒琪 |
| 14 | 1.3.4 | 盖雅项目组成员确认 |  | 15d | 2024-07-08 | 2024-07-26 |  | 丁敏、顾恒琪 |
| 15 | 2 | **项目启动阶段** |  | 35d | 2024-07-01 | 2024-08-16 |  |  |
| 16 | 2.1 | **项目章程编写** |  | 5d | 2024-07-01 | 2024-07-05 |  |  |
| 17 | 2.1.1 | 制定项目管理的标准与规范 |  | 5d | 2024-07-01 | 2024-07-05 |  | 顾恒琪、熊江红 |
| 18 | 2.1.2 | 确定项目沟通交流策略及计划 |  | 5d | 2024-07-01 | 2024-07-05 |  | 顾恒琪、熊江红 |
| 19 | 2.1.3 | 项目实施方法及管理方案 |  | 5d | 2024-07-01 | 2024-07-05 |  | 顾恒琪、熊江红 |
| 20 | 2.1.4 | 定义项目文件管理方法 |  | 5d | 2024-07-01 | 2024-07-05 |  | 顾恒琪、熊江红 |
| 21 | 2.1.5 | 项目问题管理方案 |  | 5d | 2024-07-01 | 2024-07-05 |  | 顾恒琪、熊江红 |
| 22 | 2.2 | **实施计划编写** |  | 25d | 2024-07-01 | 2024-08-02 |  |  |
| 23 | 2.2.1 | 定义项目实施目标 |  | 10d | 2024-07-22 | 2024-08-02 |  | 丁敏、顾恒琪 |
| 24 | 2.2.2 | 确定项目实施策略及方法 |  | 10d | 2024-07-22 | 2024-08-02 |  | 丁敏、顾恒琪 |
| 25 | 2.2.3 | 制定并完善项目工作计划 |  | 25d | 2024-07-01 | 2024-08-02 |  | 顾恒琪 |

| ID | WBS | Task | Type | Duration | Start | Finish | inPeople |
| --- | --- | --- | --- | --- | --- | --- | --- |
| 26 | 2.3 | **项目启动会** |  | 25d | 2024-07-15 | 2024-08-16 |  |
| 27 | 2.3.1 | 启动会材料准备 |  | 15d | 2024-07-15 | 2024-08-02 | 顾恒琪、熊江红 |
| 28 | 2.3.2 | 项目启动会 | fixed end | 5d | 2024-08-12 | 2024-08-16 | DFS、盖雅 |
| 29 | 2.4 | **管理层汇报及沟通** |  | 10d | 2024-07-22 | 2024-08-02 |  |
| 30 | 2.4.1 | 人力资源部领导汇报 |  | 5d | 2024-07-22 | 2024-07-26 |  |
| 31 | 2.4.2 | 高层访谈和愿景研讨 |  | 5d | 2024-07-29 | 2024-08-02 |  |
| 32 | 3 | **业务调研阶段** |  | 51d | 2024-07-05 | 2024-09-13 |  |
| 33 | 3.1 | **业务现状初步沟通** |  | 16d | 2024-07-05 | 2024-07-26 |  |
| 34 | 3.1.1 | 现状问卷准备 |  | 3d | 2024-07-05 | 2024-07-09 | 顾恒琪、熊江红 |
| 35 | 3.1.2 | **集团现状业务沟通（含总部7个部门）** |  | 3d | 2024-07-10 | 2024-07-12 | 顾恒琪、熊江红 |
| 36 | 3.1.2.1 | 财务部 |  | 1d | 2024-07-10 | 2024-07-10 |  |
| 37 | 3.1.2.2 | 办公室 |  | 1d | 2024-07-10 | 2024-07-10 |  |
| 38 | 3.1.2.3 | 经营规划部 |  | 1d | 2024-07-11 | 2024-07-11 |  |
| 39 | 3.1.2.4 | 汽车营销事业部 |  | 1d | 2024-07-11 | 2024-07-11 |  |
| 40 | 3.1.2.5 | 党群工作部 |  | 1d | 2024-07-12 | 2024-07-12 |  |
| 41 | 3.1.2.6 | 纪检监察部 |  | 1d | 2024-07-12 | 2024-07-12 |  |
| 42 | 3.1.2.7 | 人力资源部 |  | 1d | 2024-07-12 | 2024-07-12 |  |
| 43 | 3.1.3 | **重点二级单位现状业务沟通** |  | 5d | 2024-07-15 | 2024-07-19 | 顾恒琪、熊江红 |
| 44 | 3.1.3.1 | 广州实业 |  | 1d | 2024-07-15 | 2024-07-15 |  |
| 45 | 3.1.3.2 | 锦上技研 |  | 1d | 2024-07-16 | 2024-07-16 |  |
| 46 | 3.1.3.3 | 联友出行 |  | 1d | 2024-07-17 | 2024-07-17 |  |
| 47 | 3.1.3.4 | 数据公司 |  | 1d | 2024-07-18 | 2024-07-18 |  |
| 48 | 3.1.3.5 | 联友科技 |  | 1d | 2024-07-19 | 2024-07-19 |  |
| 49 | 3.1.3.6 | 营销板块典型单位 |  | 1d | 2024-07-19 | 2024-07-19 |  |
| 50 | 3.1.4 | 集团现状业务沟通结果分析 |  | 5d | 2024-07-22 | 2024-07-26 | 顾恒琪、熊江红 |

| ID | WBS | Task | Duration | Start | Finish | Predecessors | inPeople | Status |
| --- | --- | --- | --- | --- | --- | --- | --- | --- |
| 51 | 3.2 | **业务需求调研** | 35d | 2024-07-29 | 2024-09-13 |  |  |  |
| 52 | 3.2.1 | 调研问卷准备 | 15d | 2024-07-29 | 2024-08-16 | 50 | 熊江红 | waiting |
| 53 | 3.2.2 | 调研问卷下发 | 1d | 2024-08-19 | 2024-08-19 | 28 | 熊江红 | waiting |
| 54 | 3.2.3 | 调研问卷回收 | 2d | 2024-08-20 | 2024-08-21 | 53 | 熊江红 | waiting |
| 55 | 3.2.4 | 调研问卷分析 | 2d | 2024-08-22 | 2024-08-23 | 54 | 熊江红 | waiting |
| 56 | 3.2.5 | 二级单位访谈 | 15d | 2024-08-26 | 2024-09-13 | 55 | 熊江红 | waiting |
| 57 | 3.3 | **数据标准调研** | 30d | 2024-07-22 | 2024-08-30 |  |  |  |
| 58 | 3.3.1 | 制作数据字典收集模板 | 5d | 2024-07-22 | 2024-07-26 |  | 徐辉 |  |
| 59 | 3.3.2 | 数据字典收集模板下发 | 1d | 2024-07-29 | 2024-07-29 | 58 | 顾恒琪 | waiting |
| 60 | 3.3.3 | 数据字典回收 | 4d | 2024-07-30 | 2024-08-02 | 59 | 顾恒琪 | waiting |
| 61 | 3.3.4 | 组织用户统一平台访谈 | 5d | 2024-08-12 | 2024-08-16 |  | 顾恒琪 |  |
| 62 | 3.3.5 | 其他关联系统访谈 | 10d | 2024-08-19 | 2024-08-30 | 61 | 顾恒琪 | waiting |
| 63 | 4 | **系统蓝图阶段** | 105d | 2024-07-08 | 2024-11-29 |  |  |  |
| 64 | 4.1 | **硬件环境准备** | 50d | 2024-07-08 | 2024-09-13 |  |  |  |
| 65 | 4.1.1 | 定义环境需求 | 5d | 2024-07-08 | 2024-07-12 |  | 顾恒琪、顾浩 |  |
| 66 | 4.1.2 | 定义和分配团队系统访问权限 | 5d | 2024-07-08 | 2024-07-12 |  | 顾恒琪、顾浩 |  |
| 67 | 4.1.3 | 定义技术标准和流程 | 5d | 2024-07-08 | 2024-07-12 |  | 顾恒琪、顾浩 |  |
| 68 | 4.1.4 | 硬件蓝图设计文档编写 | 5d | 2024-07-08 | 2024-07-12 |  | 顾恒琪、顾浩 |  |
| 69 | 4.1.5 | 硬件环境准备 | 5d | 2024-08-26 | 2024-08-30 |  | 联友 |  |
| 70 | 4.1.6 | 测试、生产环境系统安装和部署 | 10d | 2024-09-02 | 2024-09-13 |  | 顾浩 |  |
| 71 | 4.2 | 系统标准功能搭建 | 34d | 2024-09-16 | 2024-10-31 | 70 |  | waiting |
| 72 | 4.3 | 组织人事业务咨询 | 25d | 2024-09-16 | 2024-10-18 | 56 |  | waiting |
| 73 | 4.4 | **数据标准梳理** | 30d | 2024-09-02 | 2024-10-11 | 62 |  | waiting |
| 74 | 4.4.1 | 数据标准制定 | 15d | 2024-09-02 | 2024-09-20 |  |  | waiting |
| 75 | 4.4.2 | 数据标准确认和调整 | 15d | 2024-09-23 | 2024-10-11 | 74 |  | waiting |

| ID | WBS | Task | Type | Duration | Start | Finish | Predecessors | Status |
| --- | --- | --- | --- | --- | --- | --- | --- | --- |
| 76 | 4.5 | **系统蓝图设计和确认** |  | 20d | 2024-10-21 | 2024-11-15 | 72 | waiting |
| 77 | 4.5.1 | 蓝图设计 |  | 10d | 2024-10-21 | 2024-11-01 |  | waiting |
| 78 | 4.5.2 | 蓝图确认及调整 |  | 10d | 2024-11-04 | 2024-11-15 | 77 | waiting |
| 79 | 4.6 | **数据收集** |  | 15d | 2024-10-14 | 2024-11-01 | 75 | waiting |
| 80 | 4.6.1 | 数据收集模板下发 |  | 1d | 2024-10-14 | 2024-10-14 |  | waiting |
| 81 | 4.6.2 | 数据回收和校验 |  | 14d | 2024-10-15 | 2024-11-01 | 80 | waiting |
| 82 | 4.7 | 数据清洗转换和导入 |  | 20d | 2024-11-04 | 2024-11-29 | 81 | waiting |
| 83 | 4.8 | 系统标准功能培训 |  | 4d | 2024-11-25 | 2024-11-28 |  |  |
| 84 | 4.9 | 系统切换 | fixed end | 1d | 2024-11-29 | 2024-11-29 | 83 | waiting |
| 85 | 5 | 系统实施阶段 |  | 130d | 2024-12-02 | 2025-05-30 | 82 | waiting |
| 86 | 6 | 系统上线阶段 | fixed end | 21d | 2025-06-02 | 2025-06-30 |  |  |
| 87 | 7 | 上线支持阶段 |  | 261d | 2025-07-01 | 2026-06-30 |  |  |
